# Projeto Sistema Transporte

Schedule from ProjectLibre, 2025-06-02 to 2025-06-30.

## Calendars

- Padrão: Mon-Fri 08:00-12:00, 13:00-17:00; Sat-Sun off.

## Resources

| Resource | Rate |
| --- | --- |
| Não atribuído |  |
| Analista I | 120 |
| Analista II | 120 |
| Desenv Front I | 150 |
| Desenv Front II | 150 |
| Desenv Back I | 150 |
| Desenv Back II | 150 |
| Cliente |  |
| Designer | 100 |
| Engenheiro de Software |  |
| QA |  |

## Schedule

| ID | WBS | Task | Duration | Start | Finish | Predecessors | Complete | Resources |
| --- | --- | --- | --- | --- | --- | --- | --- | --- |
| 1 | 1 | **Projeto Sistema Transporte** | 20.25d? | 2025-06-02 08:00 | 2025-06-30 10:00 |  | 52% |  |
| 2 | 1.1 | **Prospecção** | 1.62d? | 2025-06-02 08:00 | 2025-06-03 14:00 |  | 100% |  |
| 3 | 1.1.1 | **Proposta Técnica** | 1.62d? | 2025-06-02 08:00 | 2025-06-03 14:00 |  | 100% |  |
| 4 | 1.1.1.1 | Estudar Domínio | 0.62d? | 2025-06-02 08:00 | 2025-06-02 14:00 |  | 100% | Analista I |
| 5 | 1.1.1.2 | Reunir com Cliente/ fornecedor de Requisitos | 0.62d? | 2025-06-02 08:00 | 2025-06-02 14:00 |  | 100% | Analista I |
| 6 | 1.1.1.3 | Elaborar PTEC | 0.38d? | 2025-06-02 14:00 | 2025-06-02 17:00 | 5 | 100% | Analista I |
| 7 | 1.1.1.4 | Revisar PTEC | 0.38d? | 2025-06-03 08:00 | 2025-06-03 11:00 | 6 | 100% | Analista II |
| 8 | 1.1.1.5 | Aprovar PTEC | 0.25d? | 2025-06-03 11:00 | 2025-06-03 14:00 | 7 | 100% |  |
| 9 | 1.2 | **Estimativa Custo e Cronograma** | 2d? | 2025-06-03 14:00 | 2025-06-05 14:00 |  | 100% |  |
| 10 | 1.2.1 | Elaborar Estimativa de Tamanho | 1.5d? | 2025-06-03 14:00 | 2025-06-05 09:00 | 8 | 100% | Analista II |
| 11 | 1.2.2 | Revisar Estimativa de Tamanho | 0.5d? | 2025-06-05 09:00 | 2025-06-05 14:00 | 10 | 100% | Analista I |
| 12 | 1.3 | **Análise** | 2.5d? | 2025-06-03 14:00 | 2025-06-06 09:00 |  | 100% |  |
| 13 | 1.3.1 | Documento de Requisitos | 1.88d? | 2025-06-03 14:00 | 2025-06-05 13:00 | 8 | 100% | Analista I |
| 14 | 1.3.2 | MRB | 0.62d? | 2025-06-05 12:00 | 2025-06-06 09:00 | 13 | 100% | Analista II |
| 15 | 1.4 | **Projeto** | 7.5d? | 2025-06-06 09:00 | 2025-06-17 14:00 |  | 100% |  |
| 16 | 1.4.1 | Diagramas | 2.5d? | 2025-06-06 09:00 | 2025-06-10 14:00 | 14 | 100% | Engenheiro de Software |
| 17 | 1.4.2 | Criar Protótipos | 5d? | 2025-06-10 14:00 | 2025-06-17 14:00 | 16 | 100% | Designer |
| 18 | 1.4.3 | Modelo ER | 0.88d? | 2025-06-10 14:00 | 2025-06-11 13:00 | 16 | 100% | Engenheiro de Software |
| 19 | 1.5 | **Implementação** | 9.38d? | 2025-06-11 12:00 | 2025-06-24 16:00 |  | 25% |  |
| 20 | 1.5.1 | **Implementar Frontend** | 5.69d? | 2025-06-11 12:00 | 2025-06-19 09:30 |  | 64% |  |
| 21 | 1.5.1.1 | **Implementar [RFC01] Manter passageiro** | 1.75d? | 2025-06-11 12:00 | 2025-06-13 10:00 |  | 100% |  |
| 22 | 1.5.1.1.1 | Implementar [RFS01] Cadastrar Passageiro | 0.44d? | 2025-06-11 12:00 | 2025-06-11 16:30 | 18 | 100% | Desenv Front I |
| 23 | 1.5.1.1.2 | Implementar [RFS02] Consultar dados do Passageiro | 0.44d? | 2025-06-11 16:30 | 2025-06-12 11:00 | 22 | 100% | Desenv Front I |
| 24 | 1.5.1.1.3 | Implementar [RFS03] Atualizar dados do Passageiro | 0.44d? | 2025-06-12 11:00 | 2025-06-12 15:30 | 23 | 100% | Desenv Front I |
| 25 | 1.5.1.1.4 | Implementar [RFS04] Desativar/ excluir conta de Passageiro | 0.44d? | 2025-06-12 15:30 | 2025-06-13 10:00 | 24 | 100% | Desenv Front I |

| ID | WBS | Task | Duration | Start | Finish | Predecessors | Complete | Resources |
| --- | --- | --- | --- | --- | --- | --- | --- | --- |
| 26 | 1.5.1.2 | **Implementar [RFC02] Manter Motoristas** | 1.75d? | 2025-06-11 12:00 | 2025-06-13 10:00 |  | 100% |  |
| 27 | 1.5.1.2.1 | Implementar [RFS05] Cadastrar Motorista | 0.44d? | 2025-06-11 12:00 | 2025-06-11 16:30 | 18 | 100% | Desenv Front II |
| 28 | 1.5.1.2.2 | Implementar [RFS06] Consultar dados do Motorista | 0.44d? | 2025-06-11 16:30 | 2025-06-12 11:00 | 27 | 100% | Desenv Front II |
| 29 | 1.5.1.2.3 | Implementar [RFS07] Atualizar dados do Motorista | 0.44d? | 2025-06-12 11:00 | 2025-06-12 15:30 | 28 | 100% | Desenv Front II |
| 30 | 1.5.1.2.4 | Implementar [RFS08] Desativar/bloquear conta de Motorista | 0.44d? | 2025-06-12 15:30 | 2025-06-13 10:00 | 29 | 100% | Desenv Front II |
| 31 | 1.5.1.3 | **Implementar [RFC03] Manter Veículos** | 1.75d? | 2025-06-13 10:00 | 2025-06-16 17:00 |  | 100% |  |
| 32 | 1.5.1.3.1 | Implementar [RFS09] Cadastrar veículo | 0.44d? | 2025-06-13 10:00 | 2025-06-13 14:30 | 25 | 100% | Desenv Front I |
| 33 | 1.5.1.3.2 | Implementar [RFS10] Consultar veículo | 0.44d? | 2025-06-13 14:30 | 2025-06-16 09:00 | 32 | 100% | Desenv Front I |
| 34 | 1.5.1.3.3 | Implementar [RFS11] Atualizar dados do veículo | 0.44d? | 2025-06-16 09:00 | 2025-06-16 13:30 | 33 | 100% | Desenv Front I |
| 35 | 1.5.1.3.4 | Implementar [RFS12] Desativar/ remover veículo | 0.44d? | 2025-06-16 13:30 | 2025-06-16 17:00 | 34 | 100% | Desenv Front I |
| 36 | 1.5.1.4 | **Implementar [RFC04] Manter Formas de Pagamento** | 1.75d? | 2025-06-13 10:00 | 2025-06-16 17:00 |  | 100% |  |
| 37 | 1.5.1.4.1 | Implementar [RFS13] Adicionar forma de pagamento | 0.44d? | 2025-06-13 10:00 | 2025-06-13 14:30 | 30 | 100% | Desenv Front II |
| 38 | 1.5.1.4.2 | Implementar [RFS14] Listar formas de pagamento | 0.44d? | 2025-06-13 14:30 | 2025-06-16 09:00 | 37 | 100% | Desenv Front II |
| 39 | 1.5.1.4.3 | Implementar [RFS15] Definir forma de pagamento principal | 0.44d? | 2025-06-16 09:00 | 2025-06-16 13:30 | 38 | 100% | Desenv Front II |
| 40 | 1.5.1.4.4 | Implementar [RFS16] Remover forma de pagamento | 0.44d? | 2025-06-16 13:30 | 2025-06-16 17:00 | 39 | 100% | Desenv Front II |
| 41 | 1.5.1.5 | **Implementar [RFC05] Manter Histórico de Corridas** | 1.75d? | 2025-06-17 08:00 | 2025-06-18 15:00 |  |  |  |
| 42 | 1.5.1.5.1 | Implementar [RFS17] Registrar detalhes da corrida concluída | 0.44d? | 2025-06-17 08:00 | 2025-06-17 11:30 | 35 |  | Desenv Front I |
| 43 | 1.5.1.5.2 | Implementar [RFS18] Consultar histórico de corridas (Passageiro) | 0.44d? | 2025-06-17 11:30 | 2025-06-17 16:00 | 42 |  | Desenv Front I |
| 44 | 1.5.1.5.3 | Implementar [RFS19] Consultar histórico de corridas (Motorista) | 0.44d? | 2025-06-17 16:00 | 2025-06-18 10:30 | 43 |  | Desenv Front I |
| 45 | 1.5.1.5.4 | Implementar [RFS18] Consultar detalhes de corrida específica | 0.44d? | 2025-06-18 10:30 | 2025-06-18 15:00 | 44 |  | Desenv Front I |
| 46 | 1.5.1.6 | **Implementar [RFC06] Manter Avaliações** | 2.19d? | 2025-06-17 08:00 | 2025-06-19 09:30 |  |  |  |
| 47 | 1.5.1.6.1 | Implementar [RFS19]Registrar avaliação da corrida (passageiro para motorista) | 0.44d? | 2025-06-17 08:00 | 2025-06-17 11:30 | 40 |  | Desenv Front II |
| 48 | 1.5.1.6.2 | Implementar [RFS20] Registrar avaliação da corrida (motorista para passageiro) | 0.44d? | 2025-06-17 11:30 | 2025-06-17 16:00 | 47 |  | Desenv Front II |
| 49 | 1.5.1.6.3 | Implementar [RFS21] Consultar avaliação da corrida | 0.44d? | 2025-06-17 16:00 | 2025-06-18 10:30 | 48 |  | Desenv Front II |
| 50 | 1.5.1.6.4 | Implementar [RFS22] Alterar avaliação da corrida | 0.44d? | 2025-06-18 10:30 | 2025-06-18 15:00 | 49 |  | Desenv Front II |
| 51 | 1.5.1.6.5 | Implementar [RFS23] Excluir avaliação da corrida | 0.44d? | 2025-06-18 15:00 | 2025-06-19 09:30 | 50 |  | Desenv Front II |
| 52 | 1.5.2 | Implementar backend | 7.5d? | 2025-06-11 13:00 | 2025-06-20 17:00 | 18 |  | Desenv Back I; Desenv Back II |
| 53 | 1.5.3 | Integrar Sistemas | 1.88d? | 2025-06-23 08:00 | 2025-06-24 16:00 | 52 |  | Desenv Back I |

| ID | WBS | Task | Duration | Start | Finish | Predecessors | Complete | Resources |
| --- | --- | --- | --- | --- | --- | --- | --- | --- |
| 54 | 1.6 | **Testes** | 11d? | 2025-06-13 10:00 | 2025-06-30 10:00 |  | 81% |  |
| 55 | 1.6.1 | Testar RFC01 | 3.38d? | 2025-06-24 16:00 | 2025-06-30 10:00 | 53 | 100% | QA |
| 56 | 1.6.2 | Testar RFC02 | 0.12d? | 2025-06-13 10:00 | 2025-06-13 11:00 | 21 | 100% |  |
| 57 | 1.6.3 | Testar RFC03 | 0.12d? | 2025-06-13 10:00 | 2025-06-13 11:00 | 26 | 100% |  |
| 58 | 1.6.4 | Testar RFC04 | 0.12d? | 2025-06-17 08:00 | 2025-06-17 09:00 | 31 | 100% |  |
| 59 | 1.6.5 | Testar RFC05 | 0.12d? | 2025-06-17 08:00 | 2025-06-17 09:00 | 36 |  |  |
| 60 | 1.6.6 | Testar RFC06 | 0.12d? | 2025-06-18 15:00 | 2025-06-18 16:00 | 41 |  |  |
| 61 | 1.6.7 | Aprovar implementações | 0.62d? | 2025-06-18 16:00 | 2025-06-19 13:00 | 60 |  | QA |
| 62 | 1.7 | **Implantação do Sistema** | 1.88d? | 2025-06-19 13:00 | 2025-06-23 11:00 |  |  |  |
| 63 | 1.7.1 | Implantar sistema para cliente | 1.88d? | 2025-06-19 13:00 | 2025-06-23 11:00 | 61 |  | Engenheiro de Software |
